# BrainLEDProject

Schedule from MS Project, 2018-07-30 to 2018-10-26, costs in $, A marks actual dates.

## Calendars

- Standard: Mon-Fri 08:00-12:00, 13:00-17:00; Sat-Sun off.

## Resources

| Resource | Rate |
| --- | --- |
| Timothy Finn | 30 |
| Yeqing Liu | 30 |
| Josh Francis | 30 |
| Michael Doug | 30 |
| George Prois | 30 |

## Schedule

| ID | WBS | Task | Type | Duration | Start | Finish | Predecessors | Complete | Baseline start | Baseline finish | Baseline duration | Resources | Work | Actual work | Cost | Actual cost |
| --- | --- | --- | --- | --- | --- | --- | --- | --- | --- | --- | --- | --- | --- | --- | --- | --- |
| 2 | 1 | **Task Start** |  | 0d | 2018-07-31 A | 2018-07-31 A |  | 100% | 2018-07-31 | 2018-07-31 | 0d |  |  |  |  |  |
| 3 | 1.1 | **Concept** |  | 12d | 2018-07-30 A | 2018-08-14 A |  | 100% | 2018-07-30 | 2018-08-14 | 12d |  | 568h | 568h | 17,040 | 17,040 |
| 4 | 1.1.1 | **Identify Stakeholder and Requirements** |  | 12d | 2018-07-30 A | 2018-08-14 A |  | 100% | 2018-07-30 | 2018-08-14 | 12d |  | 328h | 328h | 9,840 | 9,840 |
| 5 | 1.1.1.1 | Gather Initial Requirements |  | 3d | 2018-07-31 A | 2018-08-02 A | 2 | 100% | 2018-07-31 | 2018-08-02 | 3d | George Prois; Josh Francis; Michael Doug; Timothy Finn; Yeqing Liu | 120h | 120h | 3,600 | 3,600 |
| 6 | 1.1.1.2 | System Requirements |  | 8d | 2018-08-03 A | 2018-08-14 A | 5 | 100% | 2018-08-03 | 2018-08-14 | 8d | Timothy Finn; Yeqing Liu | 128h | 128h | 3,840 | 3,840 |
| 7 | 1.1.1.3 | User Requirements |  | 5d | 2018-08-03 A | 2018-08-09 A | 5 | 100% | 2018-08-03 | 2018-08-09 | 5d | Josh Francis; Michael Doug | 80h | 80h | 2,400 | 2,400 |
| 8 | 1.1.1.4 | Concept Initialization Complete | milestone | 0d | 2018-07-30 A | 2018-07-30 A |  | 100% | 2018-07-30 | 2018-07-30 | 0d |  |  |  |  |  |
| 9 | 1.1.2 | **Team Development** |  | 10d | 2018-07-30 A | 2018-08-10 A |  | 100% | 2018-07-30 | 2018-08-10 | 10d |  | 240h | 240h | 7,200 | 7,200 |
| 10 | 1.1.2.1 | Identify Team Skills |  | 1d | 2018-07-30 A | 2018-07-30 A |  | 100% | 2018-07-30 | 2018-07-30 | 1d | Timothy Finn | 8h | 8h | 240 | 240 |
| 11 | 1.1.2.2 | Identify Weekly Goals |  | 3d | 2018-08-03 A | 2018-08-07 A | 5 | 100% | 2018-08-03 | 2018-08-07 | 3d | Timothy Finn | 24h | 24h | 720 | 720 |
| 12 | 1.1.2.3 | Reasearch Implementation Ideas |  | 5d | 2018-08-03 A | 2018-08-09 A | 5 | 100% | 2018-08-03 | 2018-08-09 | 5d | George Prois; Josh Francis; Timothy Finn; Yeqing Liu | 160h | 160h | 4,800 | 4,800 |
| 13 | 1.1.2.4 | Develop Project Charter |  | 6d | 2018-08-03 A | 2018-08-10 A | 5 | 100% | 2018-08-03 | 2018-08-10 | 6d | Timothy Finn | 48h | 48h | 1,440 | 1,440 |
| 14 | 1.1.2.5 | Team Development Complete | milestone | 0d | 2018-07-30 A | 2018-07-30 A |  | 100% | 2018-07-30 | 2018-07-30 | 0d |  |  |  |  |  |
| 15 | 1.1.3 | Concept Phase Complete |  | 12d | 2018-07-30 A | 2018-08-14 A |  | 100% | 2018-07-30 | 2018-08-14 | 12d |  |  |  |  |  |
| 16 | 1.2 | **Design** |  | 28d | 2018-07-30 A | 2018-09-05 A |  | 100% | 2018-07-30 | 2018-09-05 | 28d |  | 896h | 896h | 26,880 | 26,880 |
| 17 | 1.2.1 | **Design Project Plan** |  | 28d | 2018-07-30 A | 2018-09-05 A |  | 100% | 2018-07-30 | 2018-09-05 | 28d |  | 568h | 568h | 17,040 | 17,040 |
| 18 | 1.2.1.1 | Create Java Software Documentation |  | 7d | 2018-08-15 A | 2018-08-23 A | 15 | 100% | 2018-08-15 | 2018-08-23 | 7d | Yeqing Liu | 56h | 56h | 1,680 | 1,680 |
| 19 | 1.2.1.2 | Create Basic Program Structure |  | 14d | 2018-08-15 A | 2018-09-03 A | 15 | 100% | 2018-08-15 | 2018-09-03 | 14d | Josh Francis; Michael Doug; Yeqing Liu | 336h | 336h | 10,080 | 10,080 |
| 20 | 1.2.1.3 | Assign Roles based on team member skill |  | 2d | 2018-09-04 A | 2018-09-05 A | 19 | 100% | 2018-09-04 | 2018-09-05 | 2d | Timothy Finn | 16h | 16h | 480 | 480 |
| 21 | 1.2.1.4 | Develop LED Driver plan |  | 8d | 2018-08-15 A | 2018-08-24 A | 15 | 100% | 2018-08-15 | 2018-08-24 | 8d | Josh Francis | 64h | 64h | 1,920 | 1,920 |
| 22 | 1.2.1.5 | Design RaspberryPi implementation |  | 12d | 2018-08-15 A | 2018-08-30 A | 15 | 100% | 2018-08-15 | 2018-08-30 | 12d | Michael Doug | 96h | 96h | 2,880 | 2,880 |
| 23 | 1.2.1.6 | Completed Design Project Plan | milestone | 0d | 2018-07-30 A | 2018-07-30 A |  | 100% | 2018-07-30 | 2018-07-30 | 0d |  |  |  |  |  |
| 24 | 1.2.2 | **Research Design Implementations** |  | 24d | 2018-07-30 A | 2018-08-30 A |  | 100% | 2018-07-30 | 2018-08-30 | 24d |  | 328h | 328h | 9,840 | 9,840 |
| 25 | 1.2.2.1 | Investigate LED Driver Implementation |  | 10d | 2018-08-15 A | 2018-08-28 A | 15 | 100% | 2018-08-15 | 2018-08-28 | 10d | Josh Francis | 80h | 80h | 2,400 | 2,400 |
| 26 | 1.2.2.2 | Investigate EPOCH+ headset libraries |  | 12d | 2018-08-15 A | 2018-08-30 A | 15 | 100% | 2018-08-15 | 2018-08-30 | 12d | Michael Doug; Yeqing Liu | 192h | 192h | 5,760 | 5,760 |
| 27 | 1.2.2.3 | Liase with staekholder on implementation documents |  | 3d | 2018-07-30 A | 2018-08-01 A | 23 | 100% | 2018-07-30 | 2018-08-01 | 3d | Timothy Finn | 24h | 24h | 720 | 720 |
| 28 | 1.2.2.4 | Review RaspberryPi implementation Documents |  | 2d | 2018-08-02 A | 2018-08-03 A | 27 | 100% | 2018-08-02 | 2018-08-03 | 2d | George Prois; Michael Doug | 32h | 32h | 960 | 960 |
| 29 | 1.2.2.5 | Completetd Research Design Implementations | milestone | 0d | 2018-08-03 A | 2018-08-03 A | 28 | 100% | 2018-08-03 | 2018-08-03 | 0d |  |  |  |  |  |
| 30 | 1.2.3 | Design Stage Completed | milestone | 0d | 2018-09-05 A | 2018-09-05 A | 17, 24, 37 | 100% | 2018-09-05 | 2018-09-05 | 0d |  |  |  |  |  |

| ID | WBS | Task | Type | Duration | Start | Finish | Predecessors | Complete | Remaining | Baseline start | Baseline finish | Baseline duration | Total slack | Free slack | Constraint | Resources | Work | Actual work | Cost | Actual cost |
| --- | --- | --- | --- | --- | --- | --- | --- | --- | --- | --- | --- | --- | --- | --- | --- | --- | --- | --- | --- | --- |
| 31 | 1.3 | **Implementation** |  | 58d | 2018-07-30 A | 2018-10-17 |  | 81% | 11.05d | 2018-07-30 | 2018-10-17 | 58d | 3d |  |  |  | 872h | 544h | 26,160 | 16,320 |
| 32 | 1.3.1 | **Programming implementation** |  | 21d | 2018-09-06 A | 2018-10-04 |  | 95% | 1.03d | 2018-09-06 | 2018-10-04 | 21d | 3d |  |  |  | 488h | 464h | 14,640 | 13,920 |
| 33 | 1.3.1.1 | Java Program Implementation |  | 21d | 2018-09-06 A | 2018-10-04 A | 30 | 100% |  | 2018-09-06 | 2018-10-04 | 21d |  |  | finish no earlier than 2018-10-04 | Yeqing Liu | 168h | 168h | 5,040 | 5,040 |
| 34 | 1.3.1.2 | LED Driver Software Light Implementation |  | 20d | 2018-09-06 A | 2018-10-03 | 30 | 90% | 2d | 2018-09-06 | 2018-10-03 | 20d | 4d | 1d |  | Josh Francis | 160h | 144h | 4,800 | 4,320 |
| 35 | 1.3.1.3 | RaspberryPi Code Implementation |  | 20d | 2018-09-06 A | 2018-10-03 | 30 | 95% | 1d | 2018-09-06 | 2018-10-03 | 20d | 4d | 1d |  | Michael Doug | 160h | 152h | 4,800 | 4,560 |
| 36 | 1.3.1.4 | Completed Programming Implementation | milestone | 0d | 2018-10-04 | 2018-10-04 | 33, 34, 35 |  |  | 2018-10-04 | 2018-10-04 | 0d | 3d | 0d |  |  |  |  |  |  |
| 37 | 1.3.2 | **Team Enviornment Setup** |  | 5d | 2018-07-30 A | 2018-08-03 A |  | 100% |  | 2018-07-30 | 2018-08-03 | 5d |  |  |  |  | 80h | 80h | 2,400 | 2,400 |
| 38 | 1.3.2.1 | Setup GIT Repository |  | 4d | 2018-07-30 A | 2018-08-02 A |  | 100% |  | 2018-07-30 | 2018-08-02 | 4d |  |  |  | Timothy Finn | 32h | 32h | 960 | 960 |
| 39 | 1.3.2.2 | Setup Automated Testing |  | 5d | 2018-07-30 A | 2018-08-03 A |  | 100% |  | 2018-07-30 | 2018-08-03 | 5d |  |  |  | Timothy Finn | 40h | 40h | 1,200 | 1,200 |
| 40 | 1.3.2.3 | Team messaging service creation |  | 1d | 2018-07-30 A | 2018-07-30 A |  | 100% |  | 2018-07-30 | 2018-07-30 | 1d |  |  |  | Timothy Finn | 8h | 8h | 240 | 240 |
| 41 | 1.3.2.4 | Completed Team Enviornment Setup | milestone | 0d | 2018-08-03 A | 2018-08-03 A | 38, 39, 40 | 100% |  | 2018-08-03 | 2018-08-03 | 0d |  |  |  |  |  |  |  |  |
| 42 | 1.3.3 | **Code Review and Testing** |  | 9d | 2018-10-05 | 2018-10-17 |  |  |  | 2018-10-05 | 2018-10-17 | 9d | 3d |  |  |  | 272h |  | 8,160 |  |
| 43 | 1.3.3.1 | Review Team members code |  | 3d | 2018-10-05 | 2018-10-09 | 36 |  |  | 2018-10-05 | 2018-10-09 | 3d | 3d | 0d |  | George Prois; Josh Francis; Michael Doug; Timothy Finn | 96h |  | 2,880 |  |
| 44 | 1.3.3.2 | Make Suggested Changes |  | 4d | 2018-10-10 | 2018-10-15 | 43 |  |  | 2018-10-10 | 2018-10-15 | 4d | 3d | 0d |  | George Prois; Josh Francis; Michael Doug; Timothy Finn | 128h |  | 3,840 |  |
| 45 | 1.3.3.3 | Completed Code Review Task |  | 2d | 2018-10-16 | 2018-10-17 | 44 |  |  | 2018-10-16 | 2018-10-17 | 2d | 3d | 0d |  | Josh Francis; Michael Doug; Yeqing Liu | 48h |  | 1,440 |  |
| 46 | 1.3.3.4 | Completed Code Review | milestone | 0d | 2018-10-17 | 2018-10-17 | 45 |  |  | 2018-10-17 | 2018-10-17 | 0d | 3d | 0d |  |  |  |  |  |  |
| 47 | 1.3.4 | **3D Printed Model** |  | 4d | 2018-09-27 | 2018-10-02 |  |  |  | 2018-09-27 | 2018-10-02 | 4d | 14d |  |  |  | 32h |  | 960 |  |
| 48 | 1.3.4.1 | Design and Print 3D Model |  | 4d | 2018-09-27 | 2018-10-02 |  |  |  | 2018-09-27 | 2018-10-02 | 4d | 14d | 11d |  | George Prois | 32h |  | 960 |  |
| 49 | 1.3.5 | Finished Implementation Stage | milestone | 0d | 2018-10-17 | 2018-10-17 | 46, 48 |  |  | 2018-10-17 | 2018-10-17 | 0d | 3d | 0d |  |  |  |  |  |  |
| 50 | 1.4 | **Closing** |  | 7d | 2018-10-18 | 2018-10-26 |  |  |  | 2018-10-18 | 2018-10-26 | 7d | 3d |  |  |  | 120h |  | 3,600 |  |
| 51 | 1.4.1 | Review requirements with Stakholder |  | 2d | 2018-10-18 | 2018-10-19 | 49 |  |  | 2018-10-18 | 2018-10-19 | 2d | 8d | 5d |  | Josh Francis; Michael Doug; Yeqing Liu | 48h |  | 1,440 |  |
| 52 | 1.4.2 | Complete Documentation |  | 7d | 2018-10-18 | 2018-10-26 | 49 |  |  | 2018-10-18 | 2018-10-26 | 7d | 3d | 0d |  | Timothy Finn | 56h |  | 1,680 |  |
| 53 | 1.4.3 | Display Product to stakeholder and user training |  | 2d | 2018-10-18 | 2018-10-19 | 49 |  |  | 2018-10-18 | 2018-10-19 | 2d | 8d | 5d |  | George Prois | 16h |  | 480 |  |
| 54 | 1.4.4 | Handover all Documents and Code implementation | milestone | 0d | 2018-10-26 | 2018-10-26 | 51, 52, 53 |  |  | 2018-10-26 | 2018-10-26 | 0d | 3d | 0d |  | Timothy Finn |  |  |  |  |
| 55 | 1.4.5 | Closing Stage Finished | milestone | 0d | 2018-10-26 | 2018-10-26 | 54 |  |  | 2018-10-26 | 2018-10-26 | 0d | 3d |  |  |  |  |  |  |  |
| 56 | 1.5 | Finished Project | milestone | 0d | 2018-10-26 | 2018-10-26 | 54 |  |  | 2018-10-26 | 2018-10-26 | 0d | 3d |  |  |  |  |  |  |  |
